# Cronograma V2

Schedule from MS Project, 2024-04-29 to 2024-10-29, costs in €, A marks actual dates.

## Calendars

- Estándar: Mon-Fri 09:00-13:00, 15:00-19:00; Sat-Sun off.

## Resources

| Resource | Group | Rate |
| --- | --- | --- |
| Emmanuel Julio | Backend | 23017 |
| Luci Oses | Backend | 23017 |
| Claudio Damico | Backend | 23017 |
| Matias Ayala | Frontend | 23017.9 |
| Matias Benites | Frontend | 23017.9 |
| Matias Suares | Frontend | 23017.9 |
| Daniel Campos | SEO y Marketing | 22300 |
| Lucas Olivera | Arquitectura | 25955.7 |
| Líder técnico |  |  |
| Luciano Ghelfi | Diseño grafico UX | 14619.5 |
| Mauro Salinas | Devops | 22800 |
| Tamara Cardenas | Devops | 22800 |
| Pablo Sabatino | DBA | 22810 |
| Daiana Cabrera | Testing | 15863 |
| Javier Splinter | Testing | 15863 |
| Mariana Lopez | Testing | 15863 |
| Belen Julio | Diseñador grafico UX | 14619.5 |

## Schedule

| ID | WBS | Task | Type | Duration | Start | Finish | Predecessors | Complete | Remaining | Total slack | Free slack | Constraint | Resources | Work | Actual work | Cost | Actual cost |
| --- | --- | --- | --- | --- | --- | --- | --- | --- | --- | --- | --- | --- | --- | --- | --- | --- | --- |
| 1 | 1 | **0. Desarrollo de software** |  | 131.25d? | 2024-04-29 A | 2024-10-29 |  | 2% | 128.62d? | 0d |  |  |  | 2365h | 30h | 58,995,074.54 | 684,300 |
| 2 | 1.1 | **Sprint 1** |  | 48.75d | 2024-04-29 A | 2024-07-04 |  | 7% | 45.27d | 82.5d |  |  |  | 1170h | 30h | 30,607,785.4 | 684,300 |
| 3 | 1.1.1 | **1. Diseño de base de datos y configuracion de cloud.** |  | 3.75d | 2024-04-29 A | 2024-05-02 |  | 50% | 1.88d | 0d |  |  |  | 60h | 30h | 1,368,300 | 684,300 |
| 4 | 1.1.1.1 | 1.1. DER final del modelo de base de datos |  | 30h | 2024-04-29 A | 2024-05-02 A |  | 100% |  |  |  |  | Pablo Sabatino | 30h | 30h | 684,300 | 684,300 |
| 5 | 1.1.1.2 | 1.2. Clusterización y configuración del CLOUD |  | 30h | 2024-04-29 | 2024-05-02 |  |  |  | 0d |  |  | Mauro Salinas | 30h |  | 684,000 |  |
| 6 | 1.1.2 | **2. Diseño arquitectura back end** |  | 18.75d | 2024-05-02 | 2024-05-29 | 4 |  |  | 0d |  |  |  | 600h |  | 14,218,449 |  |
| 7 | 1.1.2.1 | 2.1. Arquitectura en microservicios planificada, arquitectura CLOUD y arquitectura de paquetes estratégica para satisfacer servicios |  | 150h | 2024-05-02 | 2024-05-29 | 4, 5 |  |  | 0d |  |  | Emmanuel Julio; Lucas Olivera; Mauro Salinas; Luci Oses | 600h |  | 14,218,449 |  |
| 8 | 1.1.3 | **3. Diseño arquitectura front end** |  | 26.25d | 2024-05-29 | 2024-07-04 |  |  |  | 82.5d |  |  |  | 510h |  | 12,238,558.4 |  |
| 9 | 1.1.3.1 | 3.1. Arquitectura hexagonal evolutiva con integración de módulo de lectura archivo ADOBE.XD y mapeo a archivo de salida JSX. |  | 210h | 2024-05-29 | 2024-07-04 | 7 |  |  | 82.5d | 0d |  | Lucas Olivera; Matias Ayala; Matias Benites | 510h |  | 12,238,558.4 |  |
| 10 | 1.1.4 | Reserva contingencia SPRINT 1 | milestone | 0d | 2024-07-04 | 2024-07-04 | 9 |  |  | 82.5d |  |  |  |  |  | 2,782,478 |  |
| 11 | 1.2 | **Sprint 2** |  | 66.25d | 2024-05-29 | 2024-08-29 |  |  |  | 0d |  |  |  | 337h |  | 8,021,737.06 |  |
| 12 | 1.2.1 | **5. Módulo Login** |  | 11d | 2024-05-29 | 2024-06-13 |  |  |  | 0d |  |  |  | 93h |  | 2,026,144.9 |  |
| 13 | 1.2.1.1 | **5.1. ABM USUARIOS** |  | 0.38d | 2024-05-29 | 2024-05-29 |  |  |  | 0d |  |  |  | 12h |  | 276,204 |  |
| 14 | 1.2.1.1.1 | 5.1.1. Insertar usuarios |  | 3h | 2024-05-29 | 2024-05-29 | 7 |  |  | 108.38d |  |  | Claudio Damico | 3h |  | 69,051 |  |
| 15 | 1.2.1.1.2 | 5.1.2. Editar usuarios |  | 3h | 2024-05-29 | 2024-05-29 | 7 |  |  | 108.38d |  |  | Emmanuel Julio | 3h |  | 69,051 |  |
| 16 | 1.2.1.1.3 | 5.1.3. Borrar usuarios |  | 3h | 2024-05-29 | 2024-05-29 | 7 |  |  | 108.38d |  |  | Luci Oses | 3h |  | 69,051 |  |
| 17 | 1.2.1.1.4 | 5.1.4. Obtener usuarios |  | 3h | 2024-05-29 | 2024-05-29 | 7 |  |  | 0d |  |  | Claudio Damico | 3h |  | 69,051 |  |
| 18 | 1.2.1.2 | 5.2. Servicio Login back end con seguridad JWT & comprobación de errores |  | 15h | 2024-05-29 | 2024-05-31 | 17 |  |  | 0d |  |  | Emmanuel Julio | 15h |  | 345,255 |  |
| 19 | 1.2.1.3 | 5.3. Integración de servicios front end en google, facebook, GOOGLE +, Slack e instagram. |  | 20h | 2024-06-04 | 2024-06-06 | 18 |  |  | 0d |  |  | Luci Oses | 20h |  | 460,340 |  |
| 20 | 1.2.1.4 | 5.4. Vista completa front end con integración de back end |  | 30h | 2024-06-06 | 2024-06-12 | 18, 19 |  |  | 0d |  |  | Matias Suares | 30h |  | 690,537.9 |  |
| 21 | 1.2.1.5 | 5.5. Testeo modulo completo |  | 8h | 2024-06-12 | 2024-06-13 | 20 |  |  | 0d |  |  | Mariana Lopez; Daiana Cabrera | 16h |  | 253,808 |  |
| 22 | 1.2.2 | **6. Módulo Home** |  | 45.25d | 2024-06-13 | 2024-08-15 |  |  |  | 0d |  |  |  | 98h |  | 2,057,254.9 |  |
| 23 | 1.2.2.1 | 6.1. Concepto UX de diseño |  | 10h | 2024-06-13 | 2024-06-14 | 21 |  |  | 0d |  |  | Belen Julio | 10h |  | 146,195 |  |
| 24 | 1.2.2.2 | 6.2. Servicios back end involucrando todas las funcionalidades del concepto de diseño. |  | 42h | 2024-06-14 | 2024-08-08 | 7, 21, 23 |  |  | 0d |  | start no earlier than 2024-04-19 | Emmanuel Julio | 42h |  | 966,714 |  |
| 25 | 1.2.2.3 | 6.3. Vista front end completa con integración back end. |  | 30h | 2024-08-09 | 2024-08-14 | 24 |  |  | 0d |  |  | Matias Ayala | 30h |  | 690,537.9 |  |
| 26 | 1.2.2.4 | 6.4. Testeo modulo completo |  | 8h | 2024-08-14 | 2024-08-15 | 25 |  |  | 0d |  |  | Javier Splinter; Mariana Lopez | 16h |  | 253,808 |  |

| ID | WBS | Task | Type | Duration | Start | Finish | Predecessors | Total slack | Free slack | Resources | Work | Cost |
| --- | --- | --- | --- | --- | --- | --- | --- | --- | --- | --- | --- | --- |
| 27 | 1.2.3 | **7. Módulo Ventas** |  | 54d | 2024-06-14 | 2024-08-29 |  | 36.5d |  |  | 146h | 3,209,098.76 |
| 28 | 1.2.3.1 | 7.1. Concepto UX de diseño |  | 10h | 2024-06-14 | 2024-06-17 | 23 | 70.88d | 0d | Luciano Ghelfi | 10h | 146,195 |
| 29 | 1.2.3.2 | **7.2. Servicio back end de compras con las integraciones de método de pago:** |  | 3d | 2024-08-15 | 2024-08-20 |  | 0d |  |  | 64h | 1,473,088 |
| 30 | 1.2.3.2.1 | 7.2.1. Transferencia. |  | 12h | 2024-08-15 | 2024-08-19 | 26 | 0d |  | Claudio Damico | 12h | 276,204 |
| 31 | 1.2.3.2.2 | 7.2.2. Mercado pago |  | 12h | 2024-08-15 | 2024-08-19 | 26 | 0d |  | Emmanuel Julio | 12h | 276,204 |
| 32 | 1.2.3.2.3 | 7.2.3. Crypto |  | 16h | 2024-08-15 | 2024-08-19 | 26 | 1d |  | Luci Oses | 16h | 368,272 |
| 33 | 1.2.3.2.4 | 7.2.4. Tarjeta de crédito |  | 12h | 2024-08-19 | 2024-08-20 | 26, 31 | 0d |  | Emmanuel Julio | 12h | 276,204 |
| 34 | 1.2.3.2.5 | 7.2.5. Tarjeta de débito. |  | 12h | 2024-08-19 | 2024-08-20 | 26, 30 | 0d |  | Claudio Damico | 12h | 276,204 |
| 35 | 1.2.3.3 | 7.3.Integración de prevención de fraude de tarjeta. |  | 16h | 2024-08-20 | 2024-08-22 | 33, 34 | 41.5d | 0d | Lucas Olivera | 16h | 415,290.56 |
| 36 | 1.2.3.4 | 7.4. Vista front end completa con integración de back end |  | 40h | 2024-08-20 | 2024-08-27 | 29 | 0d |  | Matias Ayala | 40h | 920,717.2 |
| 37 | 1.2.3.5 | 7.5. Testeo modulo completo |  | 16h | 2024-08-27 | 2024-08-29 | 36 | 0d |  | Daiana Cabrera | 16h | 253,808 |
| 38 | 1.2.4 | Reserva contingencia SPRINT 2 | milestone | 0d | 2024-08-29 | 2024-08-29 | 37 | 42.5d |  |  |  | 729,238.5 |
| 39 | 1.3 | **Sprint 3** |  | 68.12d? | 2024-06-18 | 2024-09-20 |  | 27.12d |  |  | 158h | 3,551,199.15 |
| 40 | 1.3.1 | **8. Módulo de Búsqueda y Filtrado** |  | 62.5d? | 2024-06-18 | 2024-09-12 |  | 32.75d |  |  | 103h | 2,103,618.7 |
| 41 | 1.3.1.1 | 8.1. Concepto UX de diseño |  | 10h | 2024-06-18 | 2024-06-19 | 28 | 70.88d | 0d | Luciano Ghelfi | 10h | 146,195 |
| 42 | 1.3.1.2 | 8.2. Servicio back end de búsqueda y filtrado contemplando las 15 formas de filtros diferentes incluyendo filtros dinámicos y estáticos. |  | 30h | 2024-08-29 | 2024-09-04 | 37 | 0d |  | Emmanuel Julio | 30h | 690,510 |
| 43 | 1.3.1.3 | 8.3. Concepto UX de integración de Landing page de categorías. |  | 15h | 2024-06-19 | 2024-06-21 | 41 | 92.12d |  | Belen Julio | 15h | 219,292.5 |
| 44 | 1.3.1.4 | 8.4. Vista front end completa con integración de back end. |  | 40h | 2024-09-04 | 2024-09-11 | 42 | 0d |  | Matias Suares | 40h | 920,717.2 |
| 45 | 1.3.1.5 | 8.5. Testeo modulo completo |  | 1d? | 2024-09-11 | 2024-09-12 | 44 | 0d |  | Javier Splinter | 8h | 126,904 |
| 46 | 1.3.2 | **9. Módulo Back Office User.** |  | 66.88d | 2024-06-19 | 2024-09-20 |  | 5.25d |  |  | 55h | 1,124,751.25 |
| 47 | 1.3.2.1 | 9.1. Concepto UX diseño. |  | 10h | 2024-06-19 | 2024-06-20 | 41 | 70.88d | 0d | Luciano Ghelfi | 10h | 146,195 |
| 48 | 1.3.2.2 | 9.2. Servicios de back end para la obtención de datos de ventas por usuario. |  | 12h | 2024-09-12 | 2024-09-13 | 45 | 0d |  | Claudio Damico | 12h | 276,204 |
| 49 | 1.3.2.3 | 9.3. Vista front end completa con integración de back end. |  | 25h | 2024-09-16 | 2024-09-19 | 48 | 0d |  | Matias Benites | 25h | 575,448.25 |
| 50 | 1.3.2.4 | 9.4. Testeo modulo completo |  | 8h | 2024-09-19 | 2024-09-20 | 49 | 0d |  | Javier Splinter | 8h | 126,904 |
| 51 | 1.3.3 | Reserva contingencia SPRINT 3 | milestone | 0d | 2024-09-20 | 2024-09-20 | 50 | 27.12d |  |  |  | 322,829.2 |

| ID | WBS | Task | Type | Duration | Start | Finish | Predecessors | Total slack | Free slack | Resources | Work | Cost |
| --- | --- | --- | --- | --- | --- | --- | --- | --- | --- | --- | --- | --- |
| 52 | 1.4 | **Sprint 4** |  | 86.88d | 2024-06-20 | 2024-10-21 |  | 5.88d |  |  | 233h | 5,401,850.7 |
| 53 | 1.4.1 | **10. Back Office Admin** |  | 73.88d | 2024-06-20 | 2024-10-02 |  | 18.88d |  |  | 100h | 2,131,904.9 |
| 54 | 1.4.1.1 | 10.1. Concepto UX diseño. |  | 10h | 2024-06-20 | 2024-06-21 | 47 | 70.88d | 0d | Luciano Ghelfi | 10h | 146,195 |
| 55 | 1.4.1.2 | **10.2. ABM VENTAS** |  | 0.5d | 2024-09-20 | 2024-09-20 |  | 0d |  |  | 16h | 368,272 |
| 56 | 1.4.1.2.1 | 10.2.1.Insertar venta. |  | 4h | 2024-09-20 | 2024-09-20 | 50 | 26.62d |  | Emmanuel Julio | 4h | 92,068 |
| 57 | 1.4.1.2.2 | 10.2.2. Borrar venta. |  | 4h | 2024-09-20 | 2024-09-20 | 50 | 26.62d |  | Claudio Damico | 4h | 92,068 |
| 58 | 1.4.1.2.3 | 10.2.3. Editar venta. |  | 4h | 2024-09-20 | 2024-09-20 | 50 | 26.62d |  | Luci Oses | 4h | 92,068 |
| 59 | 1.4.1.2.4 | 10.2.4. Obtener venta. |  | 4h | 2024-09-20 | 2024-09-20 | 50 | 0d |  | Luci Oses | 4h | 92,068 |
| 60 | 1.4.1.3 | 10.3. Servicios back end para la obtención y filtrado de ventas. |  | 20h | 2024-09-20 | 2024-09-25 | 59 | 0d |  | Emmanuel Julio | 20h | 460,340 |
| 61 | 1.4.1.4 | 10.4. Servicios back end para la obtención de estadísticas. |  | 12h | 2024-09-20 | 2024-09-24 | 59 | 1d |  | Claudio Damico | 12h | 276,204 |
| 62 | 1.4.1.5 | 10.5. Vista front end completa con integración de back end. |  | 30h | 2024-09-25 | 2024-09-30 | 60, 61 | 0d |  | Matias Suares | 30h | 690,537.9 |
| 63 | 1.4.1.6 | 10.6. Testeo modulo completo |  | 12h | 2024-09-30 | 2024-10-02 | 62 | 0d |  | Mariana Lopez | 12h | 190,356 |
| 64 | 1.4.2 | **11. Módulo Producto** |  | 79.88d | 2024-06-21 | 2024-10-11 |  | 0d |  |  | 68h | 1,423,949 |
| 65 | 1.4.2.1 | 11.1. Concepto UX diseño. |  | 10h | 2024-06-21 | 2024-06-24 | 54 | 70.88d | 0d | Luciano Ghelfi | 10h | 146,195 |
| 66 | 1.4.2.2 | 11.2. Servicios back end para la obtención de datos del producto, cálculo de envio y cálculo de pagos. |  | 20h | 2024-10-02 | 2024-10-04 | 63 | 0d |  | Claudio Damico | 20h | 460,340 |
| 67 | 1.4.2.3 | 11.3. Vista front end completa con integración de back end & integración SEO. |  | 30h | 2024-10-04 | 2024-10-10 | 66 | 0d |  | Claudio Damico | 30h | 690,510 |
| 68 | 1.4.2.4 | 11.4. Testeo modulo completo |  | 8h | 2024-10-10 | 2024-10-11 | 67 | 0d |  | Javier Splinter | 8h | 126,904 |
| 69 | 1.4.3 | **12. Modulo Ofertas** |  | 84.38d | 2024-06-25 | 2024-10-21 |  | 5.88d |  |  | 65h | 1,354,925.9 |
| 70 | 1.4.3.1 | 12.1. Concepto UX diseño USER & BACK OFFICE |  | 10h | 2024-06-25 | 2024-06-26 | 65 | 70.88d | 0d | Belen Julio | 10h | 146,195 |
| 71 | 1.4.3.2 | **12.2. ABM Ofertas** |  | 0.38d | 2024-10-11 | 2024-10-11 |  | 0d |  |  | 12h | 276,204 |
| 72 | 1.4.3.2.1 | 12.2.1. Insertar oferta. |  | 3h | 2024-10-11 | 2024-10-11 | 68 | 11.25d |  | Claudio Damico | 3h | 69,051 |
| 73 | 1.4.3.2.2 | 12.2.2. Editar oferta. |  | 3h | 2024-10-11 | 2024-10-11 | 68 | 11.25d |  | Emmanuel Julio | 3h | 69,051 |
| 74 | 1.4.3.2.3 | 12.2.3. Borrar oferta. |  | 3h | 2024-10-11 | 2024-10-11 | 68 | 11.25d |  | Luci Oses | 3h | 69,051 |
| 75 | 1.4.3.2.4 | 12.2.4. Obtener oferta. |  | 3h | 2024-10-11 | 2024-10-11 | 68 | 0d |  | Luci Oses | 3h | 69,051 |
| 76 | 1.4.3.3 | 12.3. Servicios back end para la obtención de productos de oferta. |  | 5h | 2024-10-14 | 2024-10-14 | 75 | 0d |  | Claudio Damico | 5h | 115,085 |
| 77 | 1.4.3.4 | 12.4. Vista front end completa en back office ADMIN con integración de back end. |  | 30h | 2024-10-14 | 2024-10-18 | 76 | 0d |  | Matias Benites | 30h | 690,537.9 |
| 78 | 1.4.3.5 | 12.5. Testeo modulo completo |  | 8h | 2024-10-18 | 2024-10-21 | 77 | 0d |  | Daiana Cabrera | 8h | 126,904 |
| 79 | 1.4.4 | Reserva contingencia SPRINT 4 | milestone | 0d | 2024-10-21 | 2024-10-21 | 78 | 5.88d |  |  |  | 491,070.9 |

| ID | WBS | Task | Type | Duration | Start | Finish | Predecessors | Total slack | Free slack | Resources | Work | Cost |
| --- | --- | --- | --- | --- | --- | --- | --- | --- | --- | --- | --- | --- |
| 80 | 1.5 | **Sprint 5** |  | 108.75d | 2024-05-29 | 2024-10-29 |  | 0d |  |  | 417h | 10,186,002.23 |
| 81 | 1.5.1 | **13. Módulo notificaciones** |  | 89d | 2024-06-26 | 2024-10-29 |  | 0d |  |  | 84h | 1,792,248.9 |
| 82 | 1.5.1.1 | 13.1. Concepto UX diseño USER & BACK OFFICE |  | 10h | 2024-06-26 | 2024-06-27 | 70 | 70.88d | 0d | Luciano Ghelfi | 10h | 146,195 |
| 83 | 1.5.1.2 | **13.2. ABM NOTIFICACIONES** |  | 1.38d | 2024-10-21 | 2024-10-22 |  | 0d |  |  | 19h | 437,323 |
| 84 | 1.5.1.2.1 | 13.2.1. Insertar notificaciones. |  | 7h | 2024-10-21 | 2024-10-22 | 78 | 4.5d |  | Claudio Damico | 7h | 161,119 |
| 85 | 1.5.1.2.2 | 13.2.2. Editar notificaciones. |  | 4h | 2024-10-21 | 2024-10-21 | 78 | 5.38d |  | Emmanuel Julio | 4h | 92,068 |
| 86 | 1.5.1.2.3 | 13.2.3. Borrar notificaciones. |  | 4h | 2024-10-21 | 2024-10-21 | 78 | 5.38d |  | Luci Oses | 4h | 92,068 |
| 87 | 1.5.1.2.4 | 13.2.4. Obtener notificaciones. |  | 4h | 2024-10-21 | 2024-10-21 | 78 | 0d |  | Claudio Damico | 4h | 92,068 |
| 88 | 1.5.1.3 | 13.3. Servicios back end para la inserción masiva de notificaciones. |  | 12h | 2024-10-21 | 2024-10-23 | 87 | 3.88d |  | Emmanuel Julio | 12h | 276,204 |
| 89 | 1.5.1.4 | 13.4. Servicios back end para la obtención de notificaciones del usuario. |  | 5h | 2024-10-21 | 2024-10-22 | 87 | 0d |  | Luci Oses | 5h | 115,085 |
| 90 | 1.5.1.5 | 13.5. Vista front end dentro de back office admin completa con integración de back end. |  | 30h | 2024-10-22 | 2024-10-28 | 89, 63 | 0d |  | Matias Benites | 30h | 690,537.9 |
| 91 | 1.5.1.6 | 13.6. Testeo modulo completo |  | 8h | 2024-10-28 | 2024-10-29 | 90 | 0d |  | Javier Splinter | 8h | 126,904 |
| 92 | 1.5.2 | **14. Módulo Mailing** |  | 67.25d | 2024-05-29 | 2024-08-30 |  | 41.5d |  |  | 333h | 7,467,772.23 |
| 93 | 1.5.2.1 | 14.1. Configuración de servidor de correos. |  | 10h | 2024-05-29 | 2024-05-30 | 7 | 93.12d | 0d | Mauro Salinas | 10h | 228,000 |
| 94 | 1.5.2.2 | 14.2. Cumplimiento de políticas de seguridad y de contenido para el envio de correos sin entrar en black list. |  | 48h | 2024-08-22 | 2024-08-30 | 35 | 41.5d |  | Lucas Olivera | 48h | 1,245,871.68 |
| 95 | 1.5.2.3 | 14.3. Diseño UX para cada prototipo de correo de Marketing. |  | 20h | 2024-06-27 | 2024-07-01 | 82 | 70.88d | 0d | Belen Julio | 20h | 292,390 |
| 96 | 1.5.2.4 | 14.4. Diseño UX para cada correo por venta realizada, cambios de estado de venta, de pago y de envio. |  | 20h | 2024-07-02 | 2024-07-04 | 95 | 70.88d | 0d | Luciano Ghelfi | 20h | 292,390 |
| 97 | 1.5.2.5 | 14.5. Servicios back end para la creación de correos por Carrito abandonado. |  | 20h | 2024-07-04 | 2024-07-08 | 96 | 70.88d | 0d | Claudio Damico; Matias Ayala | 40h | 920,698.6 |
| 98 | 1.5.2.6 | 14.6. Servicios back end para la creación de correos por descuentos. |  | 20h | 2024-05-30 | 2024-06-04 | 93 | 93.12d | 0d | Luci Oses; Matias Benites | 40h | 920,698.6 |
| 99 | 1.5.2.7 | 14.7. Servicios back end para la creación de correos por ofertas. |  | 20h | 2024-06-04 | 2024-06-06 | 98 | 93.12d | 22.25d | Emmanuel Julio; Matias Suares | 40h | 920,698.6 |
| 100 | 1.5.2.8 | 14.8. Servicios back end para la creación de correos por noticias propias |  | 20h | 2024-07-09 | 2024-07-11 | 99, 97 | 70.88d | 0d | Claudio Damico; Matias Ayala | 40h | 920,698.6 |
| 101 | 1.5.2.9 | 14.9. Servicios back end con la integración de envío de correos por creación de venta o cambio de estado. |  | 20h | 2024-07-11 | 2024-07-15 | 100 | 70.88d | 0d | Luci Oses; Matias Benites | 40h | 920,698.6 |
| 102 | 1.5.2.10 | 14.10. Vista front dentro de back office admin completa con integración de back end |  | 35h | 2024-07-16 | 2024-07-22 | 101 | 70.88d | 0d | Matias Suares | 35h | 805,627.55 |
| 103 | 1.5.3 | Reserva contingencia SPRINT 5 | milestone | 0d | 2024-07-22 | 2024-07-22 | 102 | 70.88d |  |  |  | 925,981.1 |

| ID | WBS | Task | Type | Duration | Start | Finish | Predecessors | Total slack | Free slack | Resources | Work | Cost |
| --- | --- | --- | --- | --- | --- | --- | --- | --- | --- | --- | --- | --- |
| 104 | 1.6 | **Sprint 6** |  | 42.12d | 2024-08-15 | 2024-10-14 |  | 10.38d |  |  | 50h | 1,226,500 |
| 105 | 1.6.1 | **4. Análisis de SEO** |  | 42.12d | 2024-08-15 | 2024-10-14 |  | 10.38d |  |  | 50h | 1,115,000 |
| 106 | 1.6.1.1 | **4.1. Análisis estructural de posicionamiento orgánico de las vistas.** |  | 42.12d | 2024-08-15 | 2024-10-14 |  | 10.38d |  |  | 50h | 1,115,000 |
| 107 | 1.6.1.1.1 | 4.1.1. Home. |  | 10h | 2024-08-15 | 2024-08-16 | 26 | 51.25d |  | Daniel Campos | 10h | 223,000 |
| 108 | 1.6.1.1.2 | 4.1.2. Producto. |  | 10h | 2024-10-11 | 2024-10-14 | 68 | 10.38d |  | Daniel Campos | 10h | 223,000 |
| 109 | 1.6.1.1.3 | 4.1.3. Búsqueda y filtrado. |  | 10h | 2024-09-12 | 2024-09-13 | 45 | 29d | 0d | Daniel Campos | 10h | 223,000 |
| 110 | 1.6.1.1.4 | 4.1.4. Landing page categorías. |  | 10h | 2024-09-13 | 2024-09-16 | 109 | 29d | 0d | Daniel Campos | 10h | 223,000 |
| 111 | 1.6.1.1.5 | 4.1.5. Landing page marcas. |  | 10h | 2024-09-17 | 2024-09-18 | 110 | 29d | 0d | Daniel Campos | 10h | 223,000 |
| 112 | 1.6.2 | Reserva contingencia SPRINT 6 | milestone | 0d | 2024-09-18 | 2024-09-18 | 111 | 29d |  |  |  | 111,500 |
